# Lab Session 3_FINAL ACTIVITY(own)

Schedule from MS Project, 2023-01-04 to 2023-08-31, status date 2023-06-30, costs in £, A marks actual dates.
HP

## Calendars

- Standard: Mon-Fri 09:00-13:00, 15:00-19:00; Sat-Sun off.

## Resources

| Resource | Rate |
| --- | --- |
| Project Manager | 70 |
| Financial Manager | 50 |
| Automobile Designer | 50 |
| Automotive Engineer | 60 |
| Mechine Technician | 30 |
| Quality Engineer | 50 |
| Hardware Engineer | 70 |
| Software Engineer | 80 |

## Schedule

| ID | WBS | Task | Duration | Start | Finish | Predecessors | Complete | Remaining | Baseline start | Baseline finish | Baseline duration | Total slack | Free slack | Constraint | Resources | Work | Actual work | Cost | Baseline cost | Actual cost |
| --- | --- | --- | --- | --- | --- | --- | --- | --- | --- | --- | --- | --- | --- | --- | --- | --- | --- | --- | --- | --- |
| 1 | 1 | **Sustainability Project-Sun Power Car** | 172d | 2023-01-04 A | 2023-08-31 |  | 74% | 45.05d | 2023-01-04 | 2023-06-16 | 118d | 0d |  |  |  | 3053.17h | 2161.17h | 176,546.67 | 175,440 | 121,626.67 |
| 2 | 1.1 | **Concept and Design** | 146d | 2023-01-04 A | 2023-07-26 |  | 94% | 8.92d | 2023-01-04 | 2023-03-02 | 42d | 26d |  |  |  | 908h | 870h | 50,120 | 50,120 | 47,460 |
| 3 | 1.1.1 | Setting Product Vision | 10d | 2023-01-04 A | 2023-05-02 A |  | 100% |  | 2023-01-04 | 2023-01-17 | 10d |  |  |  | Automotive Engineer; Project Manager; Quality Engineer; Financial Manager | 120h | 120h | 6,400 | 6,400 | 6,400 |
| 4 | 1.1.2 | Research Market | 8d | 2023-01-18 A | 2023-05-11 A | 3 | 100% |  | 2023-01-18 | 2023-01-27 | 8d |  |  |  | Project Manager [50%]; Financial Manager | 96h | 96h | 5,440 | 5,440 | 5,440 |
| 5 | 1.1.3 | Define Customers | 13.25d | 2023-05-02 A | 2023-07-26 | 4SS+1d | 64% | 4.75d | 2023-01-19 | 2023-02-03 | 10d | 26d |  | start no earlier than 2023-05-02 | Project Manager; Financial Manager; Automotive Engineer [50%] | 100h | 62h | 6,000 | 6,000 | 3,340 |
| 6 | 1.1.4 | 3D Designing | 15d | 2023-01-18 A | 2023-05-12 A | 4SS | 100% |  | 2023-01-18 | 2023-02-07 | 15d |  |  |  | Automobile Designer; Automotive Engineer [50%] | 180h | 180h | 9,600 | 9,600 | 9,600 |
| 7 | 1.1.5 | Testing and refinement | 10.23d | 2023-05-02 A | 2023-05-31 A | 6SS+10d | 100% |  | 2023-02-01 | 2023-02-27 | 14d |  |  | start no earlier than 2023-05-02 | Quality Engineer; Automobile Designer [50%]; Automotive Engineer [200%] | 172h | 172h | 9,480 | 9,480 | 9,480 |
| 8 | 1.1.6 | Final modeling | 21.25d | 2023-05-05 A | 2023-06-05 A | 7SS+3d | 100% |  | 2023-02-06 | 2023-03-02 | 19d |  |  | start no earlier than 2023-05-02 | Automotive Engineer [50%]; Automobile Designer; Project Manager [50%]; Quality Engineer | 240h | 240h | 13,200 | 13,200 | 13,200 |
| 9 | 1.2 | **Component Integration and Test** | 93.5d | 2023-03-06 A | 2023-07-13 |  | 90% | 9.35d | 2023-03-03 | 2023-04-28 | 41d | 35.5d |  |  |  | 1305.17h | 1115.17h | 75,706.67 | 74,600 | 63,606.67 |
| 10 | 1.2.1 | Raw Materials selection | 12d | 2023-03-06 A | 2023-06-19 A | 8 | 100% |  | 2023-03-03 | 2023-03-16 | 10d |  |  |  | Automotive Engineer; Mechine Technician | 175h | 175h | 7,875 | 7,200 | 7,875 |
| 11 | 1.2.2 | Hardware Integration | 38.75d | 2023-03-24 A | 2023-06-22 A | 10SS | 100% |  | 2023-03-03 | 2023-04-06 | 25d |  |  |  | Hardware Engineer; Mechine Technician; Automotive Engineer; Quality Engineer; Project Manager | 650.17h | 650.17h | 37,831.67 | 37,400 | 37,831.67 |
| 12 | 1.2.3 | Software Integration | 15d | 2023-06-22 A | 2023-07-13 | 11 | 42% | 8.75d | 2023-04-07 | 2023-04-28 | 16d | 35.5d |  |  | Software Engineer; Automotive Engineer; Automobile Designer [50%]; Quality Engineer [50%] | 296h | 106h | 18,960 | 18,960 | 6,860 |
| 13 | 1.2.4 | System Integration | 21.75d | 2023-05-02 A | 2023-06-23 A | 11SS | 100% |  | 2023-03-17 | 2023-04-14 | 21d |  |  | start no earlier than 2023-05-02 | Project Manager; Automotive Engineer; Quality Engineer | 184h | 184h | 11,040 | 11,040 | 11,040 |
| 14 | 1.3 | **Cost Estimation** | 29.75d | 2023-06-23 A | 2023-08-03 |  | 31% | 20.47d | 2023-04-17 | 2023-05-19 | 25d | 20d |  |  |  | 520h | 176h | 31,520 | 31,520 | 10,560 |
| 15 | 1.3.1 | Component Cost Estimation | 9d | 2023-06-23 A | 2023-07-06 | 13 | 61% | 3.5d | 2023-04-17 | 2023-04-27 | 9d | 40.75d | 0d | start no earlier than 2023-05-02 | Financial Manager; Automotive Engineer; Project Manager | 216h | 132h | 12,960 | 12,960 | 7,920 |
| 16 | 1.3.2 | Assembling Cost | 15.5d | 2023-06-23 A | 2023-07-20 | 15SS | 35% | 10d | 2023-04-17 | 2023-05-11 | 19d | 0d |  | start no earlier than 2023-05-02 | Automotive Engineer; Project Manager | 160h | 44h | 10,400 | 10,400 | 2,640 |
| 17 | 1.3.3 | Final Cost | 10.75d | 2023-07-20 | 2023-08-03 | 16 |  |  | 2023-05-12 | 2023-05-19 | 6d | 0d |  |  | Project Manager; Quality Engineer; Financial Manager | 144h |  | 8,160 | 8,160 |  |
| 18 | 1.4 | **Project Scheduling** | 20d | 2023-08-04 | 2023-08-31 |  |  |  | 2023-05-22 | 2023-06-16 | 20d | 0d |  |  |  | 320h |  | 19,200 | 19,200 |  |
| 19 | 1.4.1 | Activity Schedule | 10d | 2023-08-04 | 2023-08-17 | 17 |  |  | 2023-05-22 | 2023-06-02 | 10d | 0d |  |  | Project Manager; Quality Engineer | 160h |  | 9,600 | 9,600 |  |
| 20 | 1.4.2 | Ghant Chart | 10d | 2023-08-18 | 2023-08-31 | 19 |  |  | 2023-06-05 | 2023-06-16 | 10d | 0d |  |  | Project Manager; Financial Manager | 160h |  | 9,600 | 9,600 |  |
